Schedule from MS Project, 2017-04-05 to 2017-08-01, 7 hours a day, A marks actual dates.
Sky123.Org

## Calendars

- 标准: Mon-Fri 08:00-12:00, 13:00-17:00; Sat-Sun off.

## Resources

| Resource |
| --- |
| 罗浩 |
| 翟春磊 |
| 邓超超 |
| 全体 |
| 姜帅 |
| 徐赛 |
| 马金桥 |
| 曾斌 |
| 马金乔 |
| 闻略 |

## Schedule

| ID | WBS | Task | Duration | Start | Finish | Predecessors | Complete | Remaining | Total slack | Constraint | Resources | Work | Actual work | 说明 | 完成进度 |
| --- | --- | --- | --- | --- | --- | --- | --- | --- | --- | --- | --- | --- | --- | --- | --- |
| 1 | 1 | **Mes** | 97.14d? | 2017-04-05 A | 2017-08-01 |  | 10% | 87.87d? | 0d |  |  | 577.5h | 108h |  |  |
| 2 | 1.1 | **第一阶段** | 97.14d? | 2017-04-05 A | 2017-08-01 |  | 10% | 87.87d? | 0d |  |  | 577.5h | 108h |  |  |
| 3 | 1.1.1 | 框架验证 | 5.71d? | 2017-04-10 | 2017-04-14 |  |  |  | 0d | finish no earlier than 2017-04-14 | 翟春磊 | 40h |  |  |  |
| 4 | 1.1.2 | 表结构论证及建表 | 5.71d? | 2017-04-10 | 2017-04-14 |  |  |  | 0d | finish no earlier than 2017-04-14 | 全体 | 40h |  |  |  |
| 5 | 1.1.3 | **开发阶段** | 51.43d? | 2017-04-17 A | 2017-06-16 | 3, 4 | 14% | 44.16d? | 36.57d |  |  | 334.5h | 108h |  |  |
| 6 | 1.1.3.1 | **系统管理** | 5.71d? | 2017-04-17 | 2017-04-21 |  |  |  | 38.86d |  |  |  |  |  |  |
| 7 | 1.1.3.1.1 | 系统菜单、角色、权限、用户等基本功能 | 1d? | 2017-04-17 | 2017-04-17 |  |  |  | 43.57d |  |  |  |  | 已结束 |  |
| 8 | 1.1.3.1.2 | 系统管理完善，增加机构权限 | 5.71d? | 2017-04-17 | 2017-04-21 |  |  |  | 38.86d | start no earlier than 2017-04-17 |  |  |  | 机构权限以后再添加。第一步支持到人员 |  |
| 9 | 1.1.3.1.3 | 系统参数添加 | 1.14d? | 2017-04-17 | 2017-04-17 |  |  |  | 43.43d | finish no earlier than 2017-04-17 |  |  |  | 参数未整理 |  |
| 10 | 1.1.3.1.4 | 人员信息管理 | 1.14d? | 2017-04-17 | 2017-04-17 |  |  |  | 43.43d |  |  |  |  | 需要考虑人员与用户的创建关系 |  |
| 11 | 1.1.3.2 | **工作流** | 5.71d? | 2017-04-17 | 2017-04-21 |  |  |  | 38.86d |  |  | 55h |  |  |  |
| 12 | 1.1.3.2.1 | 工作流架构重写 | 1d? | 2017-04-17 | 2017-04-17 |  |  |  | 43.57d |  | 翟春磊 | 7h |  | 未完 |  |
| 13 | 1.1.3.2.2 | 工作流简单调试及工作流建表 | 5.71d? | 2017-04-17 | 2017-04-21 |  |  |  | 38.86d | start no earlier than 2017-04-17 | 翟春磊 | 40h |  |  |  |
| 14 | 1.1.3.2.3 | 几个审批流程 | 1.14d? | 2017-04-17 | 2017-04-17 |  |  |  | 43.43d |  | 全体 | 8h |  | 先不处理 |  |
| 15 | 1.1.3.3 | **采购子系统** | 5.07d? | 2017-04-17 | 2017-04-21 |  |  |  | 82.93d |  |  | 10.5h |  |  |  |
| 16 | 1.1.3.3.1 | 合同查询列表 | 1.5d | 2017-04-20 | 2017-04-21 |  |  |  | 39.5d | start no earlier than 2017-04-20 | 姜帅 | 10.5h |  | 目前先完成了列表查询。增加、新增、删除未做 | 完成小半;余下暂不做 |
| 17 | 1.1.3.3.2 | 合同管理-》增、删、改； | 1d? | 2017-04-17 | 2017-04-17 |  |  |  | 43.57d |  |  |  |  |  |  |
| 18 | 1.1.3.3.3 | 采购单管理 | 1d? | 2017-04-20 | 2017-04-20 |  |  |  | 40d | start no earlier than 2017-04-20 |  |  |  | 不处理 |  |
| 19 | 1.1.3.4 | **计划子系统** | 2d? | 2017-04-17 | 2017-04-18 |  |  |  | 43.57d |  |  | 21h |  |  |  |
| 20 | 1.1.3.4.1 | 周计划管理 | 1d? | 2017-04-17 | 2017-04-17 |  |  |  | 50.43d |  | 罗浩 | 7h |  |  |  |
| 21 | 1.1.3.4.2 | 机台任务管理--》中利 | 1d? | 2017-04-17 | 2017-04-17 |  |  |  | 43.57d |  |  |  |  |  |  |
| 22 | 1.1.3.4.3 | 机台任务管理-->启东 | 2d? | 2017-04-17 | 2017-04-18 |  |  |  | 49.43d |  | 姜帅 | 14h |  |  |  |
| 23 | 1.1.3.5 | **工艺子系统** | 1d? | 2017-04-17 | 2017-04-17 |  |  |  | 43.57d |  |  |  |  |  |  |
| 24 | 1.1.3.5.1 | 工艺参数管理 | 1d? | 2017-04-17 | 2017-04-17 |  |  |  | 43.57d |  |  |  |  |  |  |
| 25 | 1.1.3.5.2 | 工艺路线管理 | 1d? | 2017-04-17 | 2017-04-17 |  |  |  | 43.57d |  |  |  |  |  |  |
| 26 | 1.1.3.5.3 | 工序工艺参数管理 | 1d? | 2017-04-17 | 2017-04-17 |  |  |  | 43.57d |  |  |  |  |  |  |
| 27 | 1.1.3.5.4 | 工序工艺关系管理 | 1d? | 2017-04-17 | 2017-04-17 |  |  |  | 43.57d |  |  |  |  |  |  |
| 28 | 1.1.3.5.5 | 产品工艺参数管理 | 1d? | 2017-04-17 | 2017-04-17 |  |  |  | 43.57d |  |  |  |  |  |  |

Notes:
- 2: 内容包括合同、计划生成、生产整个子系统、仓库管理部分内容

| ID | WBS | Task | Duration | Start | Finish | Complete | Remaining | Total slack | Constraint | Resources | Work | Actual work | 说明 | 完成进度 |
| --- | --- | --- | --- | --- | --- | --- | --- | --- | --- | --- | --- | --- | --- | --- |
| 29 | 1.1.3.6 | **生产子系统** | 51.43d? | 2017-04-17 A | 2017-06-16 | 20% | 41.37d? | 36.57d |  |  | 248h | 108h |  |  |
| 30 | 1.1.3.6.1 | **基础数据部分** | 51.43d? | 2017-04-17 A | 2017-06-16 | 30% | 35.78d? | 36.57d |  |  | 57h | 28h |  |  |
| 31 | 1.1.3.6.1.1 | 产品管理 | 1d? | 2017-04-17 | 2017-04-17 |  |  | 43.57d |  |  |  |  | 产品的CURD(增删改查)维护 |  |
| 32 | 1.1.3.6.1.2 | 工艺路线管理 | 1d? | 2017-04-17 A | 2017-04-17 A | 100% |  |  |  | 曾斌 | 7h | 7h |  | 完成 |
| 33 | 1.1.3.6.1.3 | 工序对应机台管理 | 1d? | 2017-04-17 | 2017-04-17 |  |  | 43.57d |  |  |  |  | 合并到机台管理 |  |
| 34 | 1.1.3.6.1.4 | 原料管理 | 1d? | 2017-04-17 | 2017-04-17 |  |  | 43.57d |  |  |  |  |  |  |
| 35 | 1.1.3.6.1.5 | 人员管理 | 1d? | 2017-04-17 | 2017-04-17 |  |  | 43.57d |  | 曾斌 | 7h |  |  |  |
| 36 | 1.1.3.6.1.6 | 仓库区域管理 | 1d? | 2017-04-17 A | 2017-04-17 A | 100% |  |  |  | 马金乔 | 7h | 7h |  | 完成 |
| 37 | 1.1.3.6.1.7 | 暂放区、空盘区、成品区域管理 | 1d? | 2017-04-17 | 2017-04-17 |  |  | 43.57d |  | 马金乔 | 7h |  |  |  |
| 38 | 1.1.3.6.1.8 | 叉车管理 | 1d? | 2017-04-17 A | 2017-04-17 A | 100% |  |  |  | 马金乔 | 7h | 7h |  | 完成 |
| 39 | 1.1.3.6.1.9 | RFID卡管理 | 2.14d? | 2017-06-15 | 2017-06-16 |  |  | 36.57d | finish no earlier than 2017-06-16 | 闻略 | 15h |  |  | 完成 |
| 40 | 1.1.3.6.1.10 | 异常通知关联方管理 | 1d? | 2017-04-17 | 2017-04-17 |  |  | 43.57d |  |  |  |  |  |  |
| 41 | 1.1.3.6.1.11 | 机台管理 | 1d? | 2017-04-17 A | 2017-04-17 A | 100% |  |  |  | 曾斌 | 7h | 7h | 机台CURD维护 | 完成 |
| 42 | 1.1.3.6.1.12 | 人员能力（能操作哪些机台） | 1d? | 2017-04-17 | 2017-04-17 |  |  | 43.57d |  |  |  |  | 增加优先级字段。为计划提供依据 |  |
| 43 | 1.1.3.6.2 | **BOM管理** | 1d? | 2017-04-17 | 2017-04-17 |  |  | 43.57d |  |  |  |  |  |  |
| 44 | 1.1.3.6.2.1 | aaaa | 1d? | 2017-04-17 | 2017-04-17 |  |  | 43.57d |  |  |  |  |  |  |
| 45 | 1.1.3.6.3 | **业务部分** | 1d? | 2017-04-17 | 2017-04-17 |  |  | 43.57d |  |  |  |  |  |  |
| 46 | 1.1.3.6.3.1 | 原料入库 | 1d? | 2017-04-17 | 2017-04-17 |  |  | 43.57d |  |  |  |  |  |  |
| 47 | 1.1.3.6.3.2 | 机台、人员排产查询 | 1d? | 2017-04-17 | 2017-04-17 |  |  | 43.57d |  |  |  |  |  |  |
| 48 | 1.1.3.6.3.3 | 机台、人员调度 | 1d? | 2017-04-17 | 2017-04-17 |  |  | 43.57d |  |  |  |  |  |  |
| 49 | 1.1.3.6.3.4 | 原料出库 | 1d? | 2017-04-17 | 2017-04-17 |  |  | 43.57d |  |  |  |  |  |  |
| 50 | 1.1.3.6.3.5 | 生产任务推送管理 | 1d? | 2017-04-17 | 2017-04-17 |  |  | 43.57d |  |  |  |  | 自动触发；查询；手工推送； |  |
| 51 | 1.1.3.6.3.6 | 生产进度管理 | 1d? | 2017-04-17 | 2017-04-17 |  |  | 43.57d |  |  |  |  | 生产进度的查询展示 |  |
| 52 | 1.1.3.6.3.7 | 在单系统 | 1d? | 2017-04-17 | 2017-04-17 |  |  | 43.57d |  |  |  |  | 核心。 |  |

Notes:
- 52: 1 所有未完成合同的按一定条件查询出列表 / 2.列表展示合同或生产令基本信息，+ 计算后各工序工时，各合同的大概计划开始生产时间、结束时间 / 3.支持勾选部分加入制造清单（生产部生产的依据）（用以生产部提前完成时，临时自己找任务） / 4. 后续优化，支持原料预警

| ID | WBS | Task | Duration | Start | Finish | Complete | Total slack | Constraint | Resources | Work | Actual work | 完成进度 |
| --- | --- | --- | --- | --- | --- | --- | --- | --- | --- | --- | --- | --- |
| 53 | 1.1.3.6.4 | **统计** | 1d? | 2017-04-17 | 2017-04-17 |  | 43.57d |  |  |  |  |  |
| 54 | 1.1.3.6.4.1 | 制造通知单 | 1d? | 2017-04-17 | 2017-04-17 |  | 43.57d |  |  |  |  |  |
| 55 | 1.1.3.6.4.2 | 半制品清单 | 1d? | 2017-04-17 | 2017-04-17 |  | 43.57d |  |  |  |  |  |
| 56 | 1.1.3.6.4.3 | 成品盘清单 | 1d? | 2017-04-17 | 2017-04-17 |  | 43.57d |  |  |  |  |  |
| 57 | 1.1.3.6.4.4 | 段长不符清单 | 1d? | 2017-04-17 | 2017-04-17 |  | 43.57d |  |  |  |  |  |
| 58 | 1.1.3.6.4.5 | 落轴盘号管理 | 1d? | 2017-04-17 | 2017-04-17 |  | 43.57d |  |  |  |  |  |
| 59 | 1.1.3.6.5 | **异常管理** | 1d? | 2017-04-17 | 2017-04-17 |  | 43.57d |  |  |  |  |  |
| 60 | 1.1.3.6.5.1 | 异常展示 | 1d? | 2017-04-17 | 2017-04-17 |  | 43.57d |  |  |  |  |  |
| 61 | 1.1.3.6.5.2 | 异常处理（先不处理） | 1d? | 2017-04-17 | 2017-04-17 |  | 43.57d |  |  |  |  |  |
| 62 | 1.1.3.6.6 | 机台工序管理 | 1.14d? | 2017-04-17 | 2017-04-17 |  | 43.43d |  |  |  |  |  |
| 63 | 1.1.3.6.7 | 理论BOM管理 | 1d? | 2017-04-17 | 2017-04-17 |  | 43.57d |  |  |  |  |  |
| 64 | 1.1.3.6.8 | 生产->工作单管理 | 1d? | 2017-04-28 | 2017-04-28 |  | 33.14d | finish no earlier than 2017-04-28 |  |  |  |  |
| 65 | 1.1.3.6.9 | 生产->合工序 | 1.14d? | 2017-04-17 | 2017-04-17 |  | 43.43d |  | 罗浩 | 8h |  |  |
| 66 | 1.1.3.6.10 | 领料 | 5.71d? | 2017-04-17 A | 2017-04-21 A | 100% |  | finish no earlier than 2017-04-21 | 曾斌 | 40h | 40h | 基本完成 |
| 67 | 1.1.3.6.11 | 退料 | 5.71d? | 2017-04-17 | 2017-04-21 |  | 38.86d | start no earlier than 2017-04-17 | 徐赛 | 40h |  |  |
| 68 | 1.1.3.6.12 | 制程监测 | 5d | 2017-04-24 | 2017-04-28 |  | 33.71d | start no earlier than 2017-04-24 | 姜帅 | 35h |  | 完成 |
| 69 | 1.1.3.6.13 | 工作单完成情况统计（机台任务余量） | 1d? | 2017-04-17 | 2017-04-17 |  | 43.57d |  |  |  |  |  |
| 70 | 1.1.3.6.14 | 机台状态管理 | 1.14d? | 2017-04-17 | 2017-04-17 |  | 43.43d |  |  |  |  |  |
| 71 | 1.1.3.6.15 | 人员考勤 | 1d? | 2017-04-17 | 2017-04-17 |  | 43.57d |  |  |  |  |  |
| 72 | 1.1.3.6.16 | 杂务管理 | 5.71d? | 2017-04-17 A | 2017-04-21 A | 100% |  | start no earlier than 2017-04-17 | 马金乔 | 40h | 40h | 完成 |
| 73 | 1.1.3.6.17 | **生产->各种分析报表** | 11.43d? | 2017-04-17 | 2017-04-28 |  | 33.14d |  |  | 7h |  |  |
| 74 | 1.1.3.6.17.1 | 产品bom管理 | 1.14d? | 2017-04-17 | 2017-04-17 |  | 43.43d |  |  |  |  |  |
| 75 | 1.1.3.6.17.2 | 质量回溯 | 1d? | 2017-04-28 | 2017-04-28 |  | 33.14d | finish no earlier than 2017-04-28 | 姜帅 | 7h |  | 完成 |
| 76 | 1.1.3.6.17.3 | 其它1 | 1d? | 2017-04-17 | 2017-04-17 |  | 43.57d |  |  |  |  |  |

Notes:
- 62: 记录生产中的数据。记录包括制程采样、下轴、打卡相关数据。 / 这些数据应当是数据采集系统收集到，然后传来。 需要确认 / 被动接收数据，这里应该展示居多。收集数据后整理再提供其它功能
- 63: 说明: 模块化物料清单
- 64: 说明: 查询出当前工作单，并打印。修改工作单状态为生产中
- 65: 说明: 讨论
- 66: 说明: 领料、补料、退料；对应后台同一个表。
- 67: 说明: 领料、退料、原料入库、成品入库，需要为仓库生成一条状态（待入库）记录。仓库入库时，把状态改为已入库。往回后数据不允许删除、编辑。 未入库记录删除、编辑时，需要同步操作领料、退料、原料入库及仓库的入库表。
- 68: 说明: 已完成
- 69: 说明: 统计机台、人员，当天结束时自动汇总工作余量。为计划生成或调度提供依据
- 70: 说明: 机台状态管理。机台维护期。为计划与调度提供依据
- 71: 说明: 为计划提供依据

| ID | WBS | Task | Duration | Start | Finish | Total slack | Constraint | Resources | Work | 说明 |
| --- | --- | --- | --- | --- | --- | --- | --- | --- | --- | --- |
| 77 | 1.1.3.6.18 | **生产->各种报表** | 7.86d? | 2017-04-17 | 2017-04-25 | 80.14d |  |  | 21h |  |
| 78 | 1.1.3.6.18.1 | 能耗统计 | 2d | 2017-04-24 | 2017-04-25 | 36.71d | start no earlier than 2017-04-24 | 曾斌 | 14h |  |
| 79 | 1.1.3.6.18.2 | 成本统计 | 1d? | 2017-04-17 | 2017-04-17 | 43.57d |  | 徐赛 | 7h |  |
| 80 | 1.1.3.6.18.3 | 制程采样统计 | 1d? | 2017-04-17 | 2017-04-17 | 43.57d |  |  |  |  |
| 81 | 1.1.3.6.18.4 | 下轴记录统计 | 1d? | 2017-04-17 | 2017-04-17 | 43.57d |  |  |  |  |
| 82 | 1.1.3.6.19 | **机台HMI** | 1d? | 2017-04-17 | 2017-04-17 | 43.57d |  |  |  |  |
| 83 | 1.1.3.6.19.1 | 拉丝 | 1d? | 2017-04-17 | 2017-04-17 | 43.57d |  |  |  |  |
| 84 | 1.1.3.6.19.2 | 绞线 | 1d? | 2017-04-17 | 2017-04-17 | 43.57d |  |  |  |  |
| 85 | 1.1.3.6.19.3 | 绝缘 | 1d? | 2017-04-17 | 2017-04-17 | 43.57d |  |  |  |  |
| 86 | 1.1.3.6.19.4 | 成缆 | 1d? | 2017-04-17 | 2017-04-17 | 43.57d |  |  |  |  |
| 87 | 1.1.3.6.19.5 | 铠装 | 1d? | 2017-04-17 | 2017-04-17 | 43.57d |  |  |  |  |
| 88 | 1.1.3.6.19.6 | 护套 | 1d? | 2017-04-17 | 2017-04-17 | 43.57d |  |  |  |  |
| 89 | 1.1.3.6.19.7 | 机台打卡 | 1d? | 2017-04-17 | 2017-04-17 | 43.57d |  |  |  | 各机台读取打卡内容，与任务校验 |
| 90 | 1.1.3.6.20 | **电子看板** | 1d? | 2017-04-17 | 2017-04-17 | 43.57d |  |  |  |  |
| 91 | 1.1.3.6.20.1 | 生产部看板 | 1d? | 2017-04-17 | 2017-04-17 | 43.57d |  |  |  |  |
| 92 | 1.1.3.6.20.2 | 仓库看板 | 1d? | 2017-04-17 | 2017-04-17 | 43.57d |  |  |  |  |
| 93 | 1.1.3.6.20.3 | 质检看板（先不做） | 1d? | 2017-04-17 | 2017-04-17 | 43.57d |  |  |  |  |
| 94 | 1.1.3.6.20.4 | 车间看板 | 1d? | 2017-04-17 | 2017-04-17 | 43.57d |  |  |  |  |
| 95 | 1.1.3.6.21 | **工序看板** | 1d? | 2017-04-17 | 2017-04-17 | 43.57d |  |  |  |  |
| 96 | 1.1.3.6.21.1 | 6工序看板，可以统一做一起 | 1d? | 2017-04-17 | 2017-04-17 | 43.57d |  |  |  |  |
| 97 | 1.1.3.6.21.2 | 叉车看板 | 1d? | 2017-04-17 | 2017-04-17 | 43.57d |  |  |  |  |
| 98 | 1.1.4 | **质检子系统（功能先不做）** | 5.71d? | 2017-04-24 | 2017-04-28 | 33.14d |  |  |  |  |
| 99 | 1.1.4.1 | 质检->质检 | 5.71d? | 2017-04-24 | 2017-04-28 | 33.14d | finish no earlier than 2017-04-28 |  |  |  |
| 100 | 1.1.5 | **仓储子系统** | 20.57d? | 2017-04-05 | 2017-04-28 | 76.57d |  |  |  |  |
| 101 | 1.1.5.1 | 出库管理 | 1d? | 2017-04-28 | 2017-04-28 | 33.14d | finish no earlier than 2017-04-28 |  |  |  |
| 102 | 1.1.5.2 | 安全库存管理 | 1d? | 2017-04-05 | 2017-04-05 | 52.71d |  |  |  |  |
| 103 | 1.1.5.3 | 入库管理 | 4d | 2017-04-20 | 2017-04-25 | 37d | start no earlier than 2017-04-20 |  |  |  |

Notes:
- 89: 如何打卡还没确定 / 是否安装一个打卡机，与系统联网。

| ID | WBS | Task | Duration | Start | Finish | Total slack | Constraint | Resources | Work | 说明 | 完成进度 |
| --- | --- | --- | --- | --- | --- | --- | --- | --- | --- | --- | --- |
| 104 | 1.1.6 | **销售子系统** | 1d? | 2017-04-05 | 2017-04-05 | 52.71d |  |  |  | 先做合同批次管理、制造单； |  |
| 105 | 1.1.6.1 | 合同与批次管理 | 1d? | 2017-04-05 | 2017-04-05 | 52.71d |  |  |  |  |  |
| 106 | 1.1.6.2 | 制造单管理 | 1d? | 2017-04-05 | 2017-04-05 | 52.71d |  |  |  |  |  |
| 107 | 1.1.6.3 | 插单 | 1d? | 2017-04-05 | 2017-04-05 | 52.71d |  |  |  |  |  |
| 108 | 1.1.6.4 | 挪单 | 1d? | 2017-04-05 | 2017-04-05 | 52.71d |  |  |  |  |  |
| 109 | 1.1.7 | **中心服务器端** | 1d? | 2017-04-05 | 2017-04-05 | 52.71d |  |  |  |  |  |
| 110 | 1.1.7.1 | 界面 | 1d? | 2017-04-05 | 2017-04-05 | 52.71d |  |  |  |  |  |
| 111 | 1.1.7.2 | 实时数据解析与保存 | 1d? | 2017-04-05 | 2017-04-05 | 52.71d |  |  |  |  |  |
| 112 | 1.1.8 | **临时任务** | 47.86d? | 2017-06-05 | 2017-08-01 | 0d |  |  | 163h |  |  |
| 113 | 1.1.8.1 | 按最新需求，整理修改数据库 | 3d | 2017-06-05 | 2017-06-07 | 1.14d | finish no earlier than 2017-06-07 | 姜帅 | 21h |  | 完成 |
| 114 | 1.1.8.2 | 按最新需求，整理修改数据库 | 3d | 2017-06-05 | 2017-06-07 | 1.43d | start no earlier than 2017-06-05 | 罗浩 | 21h |  | 完成 |
| 115 | 1.1.8.3 | 根据数据库，创建实体类及其他类 | 1d? | 2017-06-08 | 2017-06-08 | 5.71d | start no earlier than 2017-06-08 | 姜帅 | 7h |  | 完成 |
| 116 | 1.1.8.4 | 生产令查询,工序时间计算，材料充足判断 | 12d | 2017-06-22 | 2017-07-06 | 21d | start no earlier than 2017-06-22 | 姜帅 | 84h |  | 完成 |
| 117 | 1.1.8.5 | 机台状态操作 | 1d? | 2017-07-07 | 2017-07-07 | 19.43d | start no earlier than 2017-07-07 | 姜帅 | 7h |  | 完成 |
| 118 | 1.1.8.6 | BOM材料明细增删查改 | 3.29d | 2017-07-28 | 2017-08-01 | 0d | finish no earlier than 2017-08-01 | 姜帅 | 23h |  | 完成 |
